# Planning

Schedule from MS Project, 2017-02-13 to 2017-04-14, costs in €, A marks actual dates.

## Calendars

- Standard: Mon 08:20-10:00, 10:20-12:20; Tue off; Wed-Fri 08:20-10:00, 10:20-12:20; Sat-Sun off.

## Resources

| Resource |
| --- |
| Patrick van Batenburg |
| Steven Logghe |

## Schedule

| ID | WBS | Task | Type | Duration | Start | Finish | Predecessors | Complete | Constraint | Deadline | Resources | Work | Actual work | Cost | Actual cost |
| --- | --- | --- | --- | --- | --- | --- | --- | --- | --- | --- | --- | --- | --- | --- | --- |
| 1 | 1 | **Inception Phase** |  | 1.83d | 2017-02-13 08:00 A | 2017-02-17 17:00 A |  | 100% |  | 2017-02-24 17:00 |  | 43.5h | 43.5h | 2,392.5 | 2,392.5 |
| 2 | 1.1 | Interview voorbereiden |  | 480min | 2017-02-13 08:00 A | 2017-02-13 17:00 A |  | 100% | finish no earlier than 2017-02-13 17:00 |  | Patrick van Batenburg | 8h | 8h | 440 | 440 |
| 3 | 1.2 | Hernieuwde opdracht |  | 930min | 2017-02-13 08:30 A | 2017-02-15 10:50 A | 2 | 100% | finish no earlier than 2017-02-14 17:00 |  | Patrick van Batenburg | 15.5h | 15.5h | 852.5 | 852.5 |
| 4 | 1.3 | Offerte |  | 50min | 2017-02-15 08:00 A | 2017-02-15 08:50 A | 3 | 100% |  |  | Patrick van Batenburg | 0.83h | 0.83h | 45.83 | 45.83 |
| 5 | 1.4 | Prototype van shermen gebaseerd op interview |  | 30min | 2017-02-16 08:00 A | 2017-02-16 08:30 A | 4 | 100% |  |  | Steven Logghe | 0.5h | 0.5h | 27.5 | 27.5 |
| 6 | 1.5 | Prototype toelichting volgordelijkheid |  | 20min | 2017-02-16 08:30 A | 2017-02-16 08:50 A | 5 | 100% |  |  | Patrick van Batenburg | 0.33h | 0.33h | 18.33 | 18.33 |
| 7 | 1.6 | Plan van aanpak |  | 930min | 2017-02-16 08:30 A | 2017-02-17 17:00 A | 6 | 100% | finish no earlier than 2017-02-17 17:00 |  | Patrick van Batenburg | 15.5h | 15.5h | 852.5 | 852.5 |
| 8 | 1.7 | Globale planning voor het gehele project in een planningstool (bijvoorbeeld in MS-Project) |  | 30min | 2017-02-13 08:00 A | 2017-02-13 08:30 A | 7 | 100% |  |  | Patrick van Batenburg | 0.5h | 0.5h | 27.5 | 27.5 |
| 9 | 1.8 | Functioneel Ontwerp inclusief taakverdeeling |  | 20min | 2017-02-17 08:00 A | 2017-02-17 08:40 A | 8 | 100% |  |  | Patrick van Batenburg | 0.33h | 0.33h | 18.33 | 18.33 |
| 10 | 1.9 | **Use-case diagram** |  | 0.04d | 2017-02-16 08:00 A | 2017-02-16 08:40 A | 9 | 100% |  |  |  | 0.5h | 0.5h | 27.5 | 27.5 |
| 11 | 1.9.1 | Selecteer actoren en use-cases en plaats een titel boven het te maken diagram |  | 20min | 2017-02-16 08:00 A | 2017-02-16 08:40 A |  | 100% |  |  | Steven Logghe | 0.33h | 0.33h | 18.33 | 18.33 |
| 12 | 1.9.2 | Bepaal per use-case welke actor(en) verantwoordelijk zijn |  | 10min | 2017-02-16 08:00 A | 2017-02-16 08:30 A |  | 100% |  |  | Steven Logghe | 0.17h | 0.17h | 9.17 | 9.17 |
| 13 | 1.10 | **Use-case templates** |  | 0.06d | 2017-02-16 08:00 A | 2017-02-16 08:50 A | 10 | 100% |  |  |  | 0.67h | 0.67h | 36.67 | 36.67 |
| 14 | 1.10.1 | Selecteer actoren en plaats een titel boven het te maken template |  | 10min | 2017-02-16 08:00 A | 2017-02-16 08:30 A |  | 100% |  |  | Steven Logghe | 0.17h | 0.17h | 9.17 | 9.17 |
| 15 | 1.10.2 | Use-case templates maken doormiddel van de use-case diagrammen |  | 30min | 2017-02-16 08:00 A | 2017-02-16 08:50 A |  | 100% |  |  | Steven Logghe | 0.5h | 0.5h | 27.5 | 27.5 |
| 16 | 1.11 | **Activiteitendiagrammen** |  | 0.04d | 2017-02-17 08:20 A | 2017-02-17 08:40 A | 13 | 100% |  |  |  | 0.83h | 0.83h | 45.83 | 45.83 |
| 17 | 1.11.1 | Selecteer operaties en/of use-cases en plaats een titel boven het te maken diagram |  | 20min | 2017-02-17 08:20 A | 2017-02-17 08:40 A |  | 100% | start no earlier than 2017-02-17 08:00 |  | Steven Logghe | 0.33h | 0.33h | 18.33 | 18.33 |
| 18 | 1.11.2 | Vind de activiteiten en de bijbehorende flow of control |  | 20min | 2017-02-17 08:20 A | 2017-02-17 08:40 A |  | 100% | start no earlier than 2017-02-17 08:20 |  | Steven Logghe | 0.33h | 0.33h | 18.33 | 18.33 |
| 19 | 1.11.3 | Bepaal per activiteit welk object verantwoordelijk is |  | 10min | 2017-02-17 08:20 A | 2017-02-17 08:30 A |  | 100% | start no earlier than 2017-02-17 08:20 |  | Steven Logghe | 0.17h | 0.17h | 9.17 | 9.17 |
| 20 | 2 | End Inception Phase | milestone | 0d | 2017-02-24 08:00 A | 2017-02-24 08:00 A | 1 | 100% | start no earlier than 2017-02-24 08:00 | 2017-02-24 17:00 |  |  |  |  |  |
| 21 | 3 | **Elaboration Phase** |  | 1.44d | 2017-02-20 08:00 A | 2017-02-24 08:50 A | 20 | 100% |  | 2017-02-24 17:00 |  | 5.25h | 5.25h | 288.75 | 288.75 |
| 22 | 3.1 | Technisch Ontwerp inclusief taakverdeling |  | 30min | 2017-02-24 08:20 A | 2017-02-24 08:50 A | 20 | 100% |  |  | Patrick van Batenburg | 0.5h | 0.5h | 27.5 | 27.5 |
| 23 | 3.2 | Modeldictionary |  | 20min | 2017-02-20 08:00 A | 2017-02-20 08:40 A | 22 | 100% |  |  | Patrick van Batenburg | 0.33h | 0.33h | 18.33 | 18.33 |
| 24 | 3.3 | Klassendiagram |  | 30min | 2017-02-20 08:00 A | 2017-02-20 08:50 A | 23 | 100% |  |  | Patrick van Batenburg | 0.5h | 0.5h | 27.5 | 27.5 |
| 25 | 3.4 | Ontwerp datadictionary |  | 15min | 2017-02-21 08:00 A | 2017-02-21 08:35 A | 24 | 100% |  |  | Steven Logghe | 0.25h | 0.25h | 13.75 | 13.75 |
| 26 | 3.5 | Sequentiediagrammen |  | 20min | 2017-02-21 08:00 A | 2017-02-21 08:40 A | 25 | 100% |  |  | Steven Logghe | 0.33h | 0.33h | 18.33 | 18.33 |
| 27 | 3.6 | Overzicht taakverdeling Inrichten van de ontwikkelomgeving |  | 10min | 2017-02-20 08:00 A | 2017-02-20 08:30 A | 26 | 100% |  |  | Patrick van Batenburg | 0.17h | 0.17h | 9.17 | 9.17 |

| ID | WBS | Task | Type | Duration | Start | Finish | Predecessors | Complete | Total slack | Constraint | Deadline | Resources | Work | Actual work | Cost | Actual cost |
| --- | --- | --- | --- | --- | --- | --- | --- | --- | --- | --- | --- | --- | --- | --- | --- | --- |
| 28 | 3.7 | **Inrichten van de ontwikkelomgeving** |  | 0.01d | 2017-02-20 08:00 A | 2017-02-20 08:25 A | 27 | 100% |  |  |  |  | 0.17h | 0.17h | 9.17 | 9.17 |
| 29 | 3.7.1 | Visual studio |  | 5min | 2017-02-20 08:00 A | 2017-02-20 08:25 A | 27 | 100% |  |  |  | Patrick van Batenburg | 0.08h | 0.08h | 4.58 | 4.58 |
| 30 | 3.7.2 | visual studio |  | 5min | 2017-02-20 08:00 A | 2017-02-20 08:25 A | 27 | 100% |  |  |  | Steven Logghe | 0.08h | 0.08h | 4.58 | 4.58 |
| 31 | 3.8 | Materialenlijst: Hard- en software van de ontwikkelomgeving |  | 90min | 2017-02-20 08:00 A | 2017-02-20 09:50 A | 28 | 100% |  |  |  | Steven Logghe | 1.5h | 1.5h | 82.5 | 82.5 |
| 32 | 3.9 | Back-up procedure |  | 60min | 2017-02-22 08:00 A | 2017-02-22 09:20 A | 31 | 100% |  |  |  | Steven Logghe | 1h | 1h | 55 | 55 |
| 33 | 3.10 | Verslag over de installatie, configuratie en testen van de testomgeving |  | 30min | 2017-02-22 08:00 A | 2017-02-22 08:50 A | 32 | 100% |  |  |  | Patrick van Batenburg | 0.5h | 0.5h | 27.5 | 27.5 |
| 34 | 4 | End Elaboration Phase | milestone | 0d | 2017-02-24 08:50 | 2017-02-24 08:50 | 21 |  | 0d | start no earlier than 2017-02-24 08:00 | 2017-02-24 17:00 |  |  |  |  |  |
| 35 | 5 | **Construction Phase** |  | 6.12d? | 2017-02-24 08:50 | 2017-03-20 10:30 | 34 |  | 0d |  |  |  | 41h |  | 2,255 |  |
| 36 | 5.1 | Organisatieonderzoek over reeds gebruikte databases/te gebruiken database |  | 1d? | 2017-02-24 08:50 | 2017-03-01 09:30 | 34 |  | 0d |  |  | Patrick van Batenburg | 8h |  | 440 |  |
| 37 | 5.2 | Genormaliseerd databaseontwerp |  | 20min | 2017-03-01 09:30 | 2017-03-01 09:50 | 36 |  | 0d |  |  | Patrick van Batenburg | 0.33h |  | 18.33 |  |
| 38 | 5.3 | Definitieve datadictionary |  | 20min | 2017-03-01 09:50 | 2017-03-01 10:30 | 37 |  | 0d |  |  | Steven Logghe | 0.33h |  | 18.33 |  |
| 39 | 5.4 | De database (gebouwd) |  | 10min | 2017-03-01 10:30 | 2017-03-01 10:40 | 38 |  | 0d |  |  | Steven Logghe | 0.17h |  | 9.17 |  |
| 40 | 5.5 | **Werkende solution/webapplicatie (v1.0.0). Alle functionaliteit is gerealiseerd.** |  | 1d? | 2017-03-01 10:40 | 2017-03-03 11:20 | 39 |  | 0d |  |  |  |  |  |  |  |
| 41 | 5.5.1 | Registratiesysteem |  | 1d? | 2017-03-01 10:40 | 2017-03-03 11:20 | 39 |  | 0d |  |  |  |  |  |  |  |
| 42 | 5.5.2 | Inlogsysteem |  | 1d? | 2017-03-01 10:40 | 2017-03-03 11:20 | 39 |  | 0d |  |  |  |  |  |  |  |
| 43 | 5.5.3 | Create taak |  | 1d? | 2017-03-01 10:40 | 2017-03-03 11:20 | 39 |  | 0d |  |  |  |  |  |  |  |
| 44 | 5.5.4 | Read taak |  | 1d? | 2017-03-01 10:40 | 2017-03-03 11:20 | 39 |  | 0d |  |  |  |  |  |  |  |
| 45 | 5.5.5 | Update taak |  | 1d? | 2017-03-01 10:40 | 2017-03-03 11:20 | 39 |  | 0d |  |  |  |  |  |  |  |
| 46 | 5.5.6 | Delete taak |  | 1d? | 2017-03-01 10:40 | 2017-03-03 11:20 | 39 |  | 0d |  |  |  |  |  |  |  |
| 47 | 5.6 | Dataset (Lijsten van ingevoerde en dus geteste data) |  | 10min | 2017-03-03 11:20 | 2017-03-03 11:30 | 40 |  | 0d |  |  | Steven Logghe | 0.17h |  | 9.17 |  |
| 48 | 5.7 | Technische test is gemaakt. |  | 1d | 2017-03-03 11:30 | 2017-03-08 12:10 | 47 |  | 0d |  |  | Patrick van Batenburg | 8h |  | 440 |  |
| 49 | 5.8 | Technische test is uitgevoerd |  | 1d | 2017-03-08 12:10 | 2017-03-13 08:50 | 48 |  | 0d |  |  | Steven Logghe | 8h |  | 440 |  |
| 50 | 5.9 | Functionele test is gemaakt. |  | 1d | 2017-03-13 08:50 | 2017-03-16 09:30 | 49 |  | 0d |  |  | Patrick van Batenburg | 8h |  | 440 |  |
| 51 | 5.10 | Functionele test is uitgevoerd. |  | 1d | 2017-03-16 09:30 | 2017-03-20 10:30 | 50 |  | 0d |  |  | Steven Logghe | 8h |  | 440 |  |
| 52 | 6 | End Construction Phase | milestone | 0d | 2017-03-20 10:30 | 2017-03-20 10:30 | 35 |  | 0d |  |  |  |  |  |  |  |

| ID | WBS | Task | Duration | Start | Finish | Predecessors | Total slack | Resources | Work | Cost |
| --- | --- | --- | --- | --- | --- | --- | --- | --- | --- | --- |
| 53 | 7 | **Transition Phase** | 6d | 2017-03-20 10:30 | 2017-04-12 10:50 | 52 | 0d |  | 40h | 2,200 |
| 54 | 7.1 | Acceptatietest is uitgevoerd bij (gebruiker van) de opdrachtgever. | 1d | 2017-03-20 10:30 | 2017-03-23 11:10 | 52 | 0d | Steven Logghe | 8h | 440 |
| 55 | 7.2 | Gebruikershandleiding | 1d | 2017-03-23 11:10 | 2017-03-27 11:50 | 54 | 0d | Steven Logghe | 8h | 440 |
| 56 | 7.3 | Projectrapport | 1d | 2017-03-27 11:50 | 2017-03-31 08:30 | 55 | 0d | Patrick van Batenburg | 8h | 440 |
| 57 | 7.4 | Teamrapport (= individuele reflectie) | 1d | 2017-03-31 08:30 | 2017-04-05 09:10 | 56 | 0d | Patrick van Batenburg; Steven Logghe | 16h | 880 |
| 58 | 7.5 | Presentatie | 1d | 2017-04-05 09:10 | 2017-04-07 09:50 | 57 | 0d |  |  |  |
| 59 | 7.6 | Logboek Tijdregistratie | 1d | 2017-04-07 09:50 | 2017-04-12 10:50 | 58 | 0d |  |  |  |
| 60 | 8 | End Transition Phase | 1d? | 2017-04-12 10:50 | 2017-04-14 11:30 | 59 | 0d |  |  |  |
